# Создание официального Web-сайта ООО «Саратов»

Schedule from MS Project, 2025-03-14 to 2025-07-16, costs in ₽.
ПРи превышении задач, срок сдвинулся на 5 дней вперед

## Calendars

- Стандартный: Mon-Fri 09:00-13:00, 14:00-18:00; Sat-Sun off.

## Resources

| Resource | Group | Rate |
| --- | --- | --- |
| Руководитель |  |  |
| Менеджер |  | 100 |
| Аналитик |  | 160 |
| Дизайнер 1 |  | 120 |
| Дизайнер 2 |  | 120 |
| Верстальщик |  | 115 |
| Программист 1 |  | 150 |
| Программист 2 | 0 | 150 |
| Программист 3 |  | 150 |
| Системный администратор |  | 170 |

## Schedule

| ID | WBS | Task | Type | Duration | Start | Finish | Predecessors | Baseline 1 start | Total slack | Free slack | Resources | Work | Cost |
| --- | --- | --- | --- | --- | --- | --- | --- | --- | --- | --- | --- | --- | --- |
| 1 | 1 | **Анализ требований** |  | 2d | 2025-03-14 | 2025-03-17 |  | 2025-03-14 |  |  |  | 224h | 23,680 |
| 2 | 1.1 | Анализ предметной области, интервьюирование клиента |  | 2d | 2025-03-14 | 2025-03-17 |  | 2025-03-14 | -12d | 0d | Руководитель; Аналитик | 32h | 2,560 |
| 3 | 1.2 | Анализ конкуренции |  | 4d | 2025-03-18 | 2025-03-25 | 2SS | 2025-03-14 | -6d | 0d | Аналитик; Менеджер | 32h | 4,160 |
| 4 | 1.3 | Анализ целевой аудитории |  | 4d | 2025-03-14 | 2025-03-19 | 2SS | 2025-03-14 | -12d | 0d | Аналитик; Менеджер | 32h | 4,160 |
| 5 | 1.4 | Разработка и утверждение концепта сайта |  | 2d | 2025-03-20 | 2025-03-21 | 4 | 2025-03-14 | -12d | 0d | Аналитик; Менеджер | 32h | 4,160 |
| 6 | 1.5 | Планирование проекта |  | 4d | 2025-03-24 | 2025-03-27 | 5 | 2025-03-14 | -12d | 0d | Аналитик; Дизайнер 1 | 32h | 4,480 |
| 7 | 1.6 | Составление ТЗ |  | 2d | 2025-03-28 | 2025-03-31 | 6 | 2025-03-14 | -12d | 0d | Менеджер; Руководитель | 32h | 1,600 |
| 8 | 1.7 | Утверждение ТЗ |  | 2d | 2025-04-01 | 2025-04-02 | 7 | 2025-03-14 | -12d | 0d | Аналитик; Руководитель | 32h | 2,560 |
| 9 | 1.8 | Завершение анализа требований | milestone | 0d | 2025-04-02 | 2025-04-02 | 8 | 2025-03-14 | -12d | 0d | Менеджер; Руководитель |  |  |
| 10 | 2 | **Разработка дизайна сайта** |  | 23d | 2025-04-03 | 2025-05-05 |  |  | 0d |  |  | 368h | 44,160 |
| 11 | 2.1 | Разработка дизайна по выбранному концепту |  | 7d | 2025-04-03 | 2025-04-11 | 8 |  | 0d |  | Дизайнер 1; Дизайнер 2 | 112h | 13,440 |
| 12 | 2.2 | Ревизия главной страницы сайта |  | 3d | 2025-04-14 | 2025-04-16 | 11 |  | 0d |  | Дизайнер 1; Дизайнер 2 | 48h | 5,760 |
| 13 | 2.3 | Разработка и ревизия дизайна второстепенных страниц |  | 5d | 2025-04-17 | 2025-04-23 | 12 |  | 0d |  | Дизайнер 1; Дизайнер 2 | 80h | 9,600 |
| 14 | 2.4 | Разработка коллажей для ра зделов сайта |  | 8d | 2025-04-24 | 2025-05-05 | 13 |  | 0d |  | Дизайнер 1; Дизайнер 2 | 128h | 15,360 |
| 15 | 2.5 | Завершение разработки дизайна | milestone | 0d | 2025-05-05 | 2025-05-05 | 14 |  | 0d |  | Дизайнер 1; Дизайнер 2 |  |  |
| 16 | 3 | **Программирование и верстка** |  | 46d | 2025-05-06 | 2025-07-08 |  |  | 0d |  |  | 999h | 138,410 |
| 17 | 3.1 | Верстка шаблонов страниц |  | 32d | 2025-05-06 | 2025-06-18 | 15 |  | 0d |  | Верстальщик | 256h | 29,440 |
| 18 | 3.2 | Программирование |  | 20d | 2025-05-06 | 2025-06-02 | 17SS |  | 19d | 0d | Программист 3; Программист 1; Программист 2 | 240h | 35,200 |
| 19 | 3.3 | Заполнение страниц и тестирование на реальных данных |  | 14d | 2025-06-19 | 2025-07-08 | 17 |  | 0d |  | Программист 3; Программист 1; Программист 2 | 335h | 49,130 |
| 20 | 3.4 | Доработка кода, исправление ошибок |  | 7d | 2025-06-03 | 2025-06-11 | 18 |  | 19d |  | Программист 3; Программист 1; Программист 2 | 168h | 24,640 |
| 21 | 3.5 | Завершение программирования и верстки | milestone | 0d | 2025-07-08 | 2025-07-08 | 20, 19 |  | 0d |  | Программист 3; Программист 1; Программист 2 |  |  |
| 22 | 4 | Запуск и сопровождение |  | 1d? | 2025-07-09 | 2025-07-09 | 21 |  | 0d |  |  |  |  |
| 23 | 5 | **Создание пакета передачи** |  | 4d | 2025-07-10 | 2025-07-15 |  |  | 0d |  |  | 88h | 10,440 |
| 24 | 5.1 | Подготовка платформы |  | 1d | 2025-07-10 | 2025-07-10 | 22 |  | 0d |  | Программист 1; Программист 2; Программист 3; Системный администратор | 32h | 4,880 |
| 25 | 5.2 | Заливка контента |  | 1d | 2025-07-14 | 2025-07-14 | 24 |  | 2d |  | Системный администратор | 8h | 1,360 |
| 26 | 5.3 | Проверка качества |  | 1d | 2025-07-11 | 2025-07-11 | 24SS |  | 0d |  | Программист 2; Системный администратор | 16h | 2,480 |
| 27 | 5.4 | Сдача сайта заказчику |  | 1d | 2025-07-14 | 2025-07-14 | 26 |  | 0d |  | Верстальщик; Менеджер; Руководитель | 24h | 1,720 |
| 28 | 5.5 | Подготовка группы сопровождения |  | 1d | 2025-07-15 | 2025-07-15 | 27 |  | 0d |  | Руководитель | 8h |  |
| 29 | 6 | Закрытие проекта |  | 1d | 2025-07-16 | 2025-07-16 | 28 |  | 0d |  | Руководитель | 8h |  |
