# Создание официального Web-сайта ООО «Саратов»

Schedule from MS Project, 2025-03-14 to 2025-06-27, costs in ₽.
Ресурсы с превышением: Аналитик - можно нанять в команду еще одного аналитика, на аутсорс может быть. Дать больше времени на выполнение блока анализа.Заплатить за переработки. / СИстемный администратор - можно снять его с блока проверки качества, так как он будет нужен только в конце для донастройки сервера.
Ресурсы с превышением:Аналитик - можно нанять в команду еще одного аналитика, на аутсорс может быть. Дать больше времени на выполнение блока анализа.Заплатить за переработки. / СИстемный администратор - можно снять его с блока проверки качества, так как он будет нужен только в конце для донастройки сервера.

## Calendars

- Стандартный: Mon-Fri 09:00-13:00, 14:00-18:00; Sat-Sun off.

## Resources

| Resource | Group | Rate |
| --- | --- | --- |
| Руководитель |  |  |
| Менеджер |  | 100 |
| Аналитик |  | 160 |
| Дизайнер 1 |  | 120 |
| Дизайнер 2 |  | 120 |
| Верстальщик |  | 115 |
| Программист 1 |  | 150 |
| Программист 2 | 0 | 140 |
| Программист 3 |  | 150 |
| Системный администратор |  | 170 |
| Доп затраты |  |  |

## Schedule

| ID | WBS | Task | Type | Duration | Start | Finish | Predecessors | Baseline 1 start | Total slack | Free slack | Resources | Work | Cost | PERT State |
| --- | --- | --- | --- | --- | --- | --- | --- | --- | --- | --- | --- | --- | --- | --- |
| 1 | 1 | **Анализ требований** |  | 2d | 2025-03-14 | 2025-03-17 |  | 2025-03-14 |  |  |  | 106.67h | 9,600 | Duration Calc'd: 03.05.2025 13:15:00 |
| 2 | 1.1 | Анализ предметной области, интервьюирование клиента | milestone | 0d | 2025-03-14 | 2025-03-14 |  | 2025-03-14 | -4.67d | 0d | Руководитель; Аналитик |  |  | Duration Calc'd: 03.05.2025 13:15:00 |
| 3 | 1.2 | Анализ конкуренции |  | 1.33d | 2025-03-14 | 2025-03-17 | 2SS | 2025-03-14 | -4.67d | 0d | Менеджер | 10.67h | 1,066.67 | Duration Calc'd: 03.05.2025 13:15:00 |
| 4 | 1.3 | Анализ целевой аудитории |  | 1.33d | 2025-03-14 | 2025-03-17 | 3SS | 2025-03-14 | -4.67d | 0d | Руководитель | 10.67h |  | Duration Calc'd: 03.05.2025 13:15:00 |
| 5 | 1.4 | Разработка и утверждение концепта сайта |  | 1.33d | 2025-03-17 | 2025-03-18 | 4 | 2025-03-14 | -4.67d | 0d | Аналитик; Менеджер | 21.33h | 2,773.33 | Duration Calc'd: 03.05.2025 13:15:00 |
| 6 | 1.5 | Планирование проекта |  | 1.33d | 2025-03-18 | 2025-03-19 | 5 | 2025-03-14 | -4.67d | 0d | Аналитик; Дизайнер 1 | 21.33h | 2,986.67 | Duration Calc'd: 03.05.2025 13:15:00 |
| 7 | 1.6 | Составление ТЗ |  | 1.33d | 2025-03-20 | 2025-03-21 | 6 | 2025-03-14 | -4.67d | 0d | Менеджер; Руководитель | 21.33h | 1,066.67 | Duration Calc'd: 03.05.2025 13:15:00 |
| 8 | 1.7 | Утверждение ТЗ |  | 1.33d | 2025-03-21 | 2025-03-24 | 7 | 2025-03-14 | -4.67d | 0d | Аналитик; Руководитель | 21.33h | 1,706.67 | Duration Calc'd: 03.05.2025 13:15:00 |
| 9 | 1.8 | Завершение анализа требований | milestone | 0d | 2025-03-24 | 2025-03-24 | 8 | 2025-03-14 | -4.67d | 0d | Менеджер; Руководитель |  |  | Duration Calc'd: 03.05.2025 13:15:00 |
| 10 | 2 | **Разработка дизайна сайта** |  | 19.67d | 2025-03-24 | 2025-04-21 |  |  |  |  |  | 325.33h | 39,040 | Duration Calc'd: 03.05.2025 13:15:00 |
| 11 | 2.1 | Разработка дизайна по выбранному концепту |  | 5.67d | 2025-03-24 | 2025-04-01 | 8 |  | 0.2d | 0d | Дизайнер 1; Дизайнер 2 | 90.67h | 10,880 | Duration Calc'd: 03.05.2025 13:15:00 |
| 12 | 2.2 | Ревизия главной страницы сайта |  | 3d | 2025-04-01 | 2025-04-04 | 11 |  | 0.2d | 0d | Дизайнер 1; Дизайнер 2 | 48h | 5,760 | Duration Calc'd: 03.05.2025 13:15:00 |
| 13 | 2.3 | Разработка и ревизия дизайна второстепенных страниц |  | 5d | 2025-04-04 | 2025-04-11 | 12 |  | 0.2d | 0d | Дизайнер 1; Дизайнер 2 | 80h | 9,600 | Duration Calc'd: 03.05.2025 13:15:00 |
| 14 | 2.4 | Разработка коллажей для ра зделов сайта |  | 5.8d | 2025-04-11 | 2025-04-21 | 13 |  | 0.2d | 0d | Дизайнер 1 [115%]; Дизайнер 2 [115%] | 106.67h | 12,800 | Duration Calc'd: 03.05.2025 13:15:00 |
| 15 | 2.5 | Завершение разработки дизайна | milestone | 0d | 2025-04-21 | 2025-04-21 | 14 |  | 0.2d |  | Дизайнер 1; Дизайнер 2 |  |  | Duration Calc'd: 03.05.2025 13:15:00 |
| 16 | 3 | **Программирование и верстка** |  | 38.67d | 2025-04-22 | 2025-06-13 |  |  |  |  |  | 930.67h | 129,384.25 | Duration Calc'd: 03.05.2025 13:15:00 |
| 17 | 3.1 | Верстка шаблонов страниц |  | 24.35d | 2025-04-22 | 2025-05-26 | 15 |  | 0.99d | 0d | Верстальщик [115%] | 224h | 25,760 | Duration Calc'd: 03.05.2025 13:15:00 |
| 18 | 3.2 | Программирование |  | 16.23d | 2025-04-22 | 2025-05-14 | 17SS |  | 16.1d | 0d | Программист 3 [115%]; Программист 1 [115%]; Программист 2 [115%] | 234.67h | 34,397.58 | Duration Calc'd: 03.05.2025 13:15:00 |
| 19 | 3.3 | Заполнение страниц и тестирование на реальных данных |  | 13.33d | 2025-05-26 | 2025-06-12 | 17 |  | 0.99d | 0d | Программист 3; Программист 1; Программист 2 | 320h | 46,933.33 | Duration Calc'd: 03.05.2025 13:15:00 |
| 20 | 3.4 | Доработка кода, исправление ошибок |  | 6.33d | 2025-05-14 | 2025-05-22 | 18 |  | 16.1d | 15.12d | Программист 3; Программист 1; Программист 2 | 152h | 22,293.33 | Duration Calc'd: 03.05.2025 13:15:00 |
| 21 | 3.5 | Завершение программирования и верстки | milestone | 0d | 2025-06-12 | 2025-06-12 | 20, 19 |  | 0.99d | 0d | Программист 3; Программист 1; Программист 2 |  |  | Duration Calc'd: 03.05.2025 13:15:00 |
| 22 | 4 | Запуск и сопровождение |  | 1d | 2025-06-12 | 2025-06-13 | 21 |  | 1.65d |  | Менеджер | 8h | 800 | Duration Calc'd: 03.05.2025 13:15:00 |
| 23 | 5 | **Создание пакета передачи** |  | 3d | 2025-06-19 | 2025-06-24 |  |  |  |  |  | 160h | 18,520 | Duration Calc'd: 03.05.2025 13:15:00 |
| 24 | 5.1 | Подготовка платформы |  | 1d | 2025-06-19 | 2025-06-20 | 22 |  | -2d | 0d | Программист 1; Программист 3 | 16h | 2,400 | Duration Calc'd: 03.05.2025 13:15:00 |
| 25 | 5.2 | Заливка контента |  | 1d | 2025-06-20 | 2025-06-23 | 24 |  | 1d |  | Системный администратор | 8h | 1,360 | Duration Calc'd: 03.05.2025 13:15:00 |
| 26 | 5.3 | Проверка качества |  | 1d | 2025-06-19 | 2025-06-20 | 24SS |  | -2d | 0d | Программист 2; Системный администратор | 16h | 2,480 | Duration Calc'd: 03.05.2025 13:15:00 |
| 27 | 5.4 | Сдача сайта заказчику |  | 1d | 2025-06-20 | 2025-06-23 | 26 |  | -2d | 0d | Верстальщик; Менеджер; Руководитель | 24h | 1,720 | Duration Calc'd: 03.05.2025 13:15:00 |
| 28 | 5.5 | Подготовка группы сопровождения |  | 3d | 2025-06-23 | 2025-06-26 | 27 |  | -2d | 0d | Руководитель; Программист 1; Программист 2; Программист 3 | 96h | 10,560 | Duration Calc'd: 03.05.2025 13:15:00 |
| 29 | 6 | Закрытие проекта |  | 1d | 2025-06-26 | 2025-06-27 | 28, 22 |  | 0d |  | Руководитель | 8h |  | Duration Calc'd: 03.05.2025 13:15:00 |
