# Создание официального Web-сайта ООО «Саратов»

Schedule from MS Project, 2025-03-14 to 2025-07-03, costs in ₽.
Ресурсы с превышением: Аналитик - можно нанять в команду еще одного аналитика, на аутсорс может быть. Дать больше времени на выполнение блока анализа.Заплатить за переработки. / СИстемный администратор - можно снять его с блока проверки качества, так как он будет нужен только в конце для донастройки сервера.
Ресурсы с превышением:Аналитик - можно нанять в команду еще одного аналитика, на аутсорс может быть. Дать больше времени на выполнение блока анализа.Заплатить за переработки. / СИстемный администратор - можно снять его с блока проверки качества, так как он будет нужен только в конце для донастройки сервера.

## Calendars

- Стандартный: Mon-Fri 09:00-13:00, 14:00-18:00; Sat-Sun off.

## Resources

| Resource | Group | Rate |
| --- | --- | --- |
| Руководитель |  |  |
| Менеджер |  | 100 |
| Аналитик |  | 160 |
| Дизайнер 1 |  | 120 |
| Дизайнер 2 |  | 120 |
| Верстальщик |  | 115 |
| Программист 1 |  | 150 |
| Программист 2 | 0 | 150 |
| Программист 3 |  | 150 |
| Системный администратор |  | 170 |

## Schedule

| ID | WBS | Task | Type | Duration | Start | Finish | Predecessors | Baseline 1 start | Total slack | Free slack | Resources | Work | Cost | PERT State |
| --- | --- | --- | --- | --- | --- | --- | --- | --- | --- | --- | --- | --- | --- | --- |
| 1 | 1 | **Анализ требований** |  | 1.33d | 2025-03-14 | 2025-03-17 |  | 2025-03-14 |  |  |  | 112h | 10,080 | Duration Calc'd: 25.04.2025 9:01:01 |
| 2 | 1.1 | Анализ предметной области, интервьюирование клиента | milestone | 0d | 2025-03-14 | 2025-03-14 |  | 2025-03-14 | -5.67d | 0d | Руководитель; Аналитик |  |  | Duration Calc'd: 25.04.2025 9:01:01 |
| 3 | 1.2 | Анализ конкуренции |  | 1.5d | 2025-03-14 | 2025-03-17 | 2SS | 2025-03-14 | -5.67d | 0d | Менеджер | 12h | 1,200 | Duration Calc'd: 25.04.2025 9:01:01 |
| 4 | 1.3 | Анализ целевой аудитории |  | 1.5d | 2025-03-14 | 2025-03-17 | 3SS | 2025-03-14 | -5.67d | 0d | Руководитель | 12h |  | Duration Calc'd: 25.04.2025 9:01:01 |
| 5 | 1.4 | Разработка и утверждение концепта сайта |  | 1.5d | 2025-03-17 | 2025-03-18 | 4 | 2025-03-14 | -5.67d | 0d | Аналитик; Менеджер | 24h | 3,120 | Duration Calc'd: 25.04.2025 9:01:01 |
| 6 | 1.5 | Планирование проекта |  | 1.33d | 2025-03-19 | 2025-03-20 | 5 | 2025-03-14 | -5.67d | 0d | Аналитик; Дизайнер 1 | 21.33h | 2,986.67 | Duration Calc'd: 25.04.2025 9:01:01 |
| 7 | 1.6 | Составление ТЗ |  | 1.33d | 2025-03-20 | 2025-03-21 | 6 | 2025-03-14 | -5.67d | 0d | Менеджер; Руководитель | 21.33h | 1,066.67 | Duration Calc'd: 25.04.2025 9:01:01 |
| 8 | 1.7 | Утверждение ТЗ |  | 1.33d | 2025-03-21 | 2025-03-24 | 7 | 2025-03-14 | -5.67d | 0d | Аналитик; Руководитель | 21.33h | 1,706.67 | Duration Calc'd: 25.04.2025 9:01:01 |
| 9 | 1.8 | Завершение анализа требований | milestone | 0d | 2025-03-24 | 2025-03-24 | 8 | 2025-03-14 | -5.67d | 0d | Менеджер; Руководитель |  |  | Duration Calc'd: 25.04.2025 9:01:01 |
| 10 | 2 | **Разработка дизайна сайта** |  | 23d | 2025-03-25 | 2025-04-24 |  |  |  |  |  | 338.67h | 40,640 | Duration Calc'd: 25.04.2025 9:01:01 |
| 11 | 2.1 | Разработка дизайна по выбранному концепту |  | 6.33d | 2025-03-25 | 2025-04-02 | 8 |  | -0.33d | 0d | Дизайнер 1; Дизайнер 2 | 101.33h | 12,160 | Duration Calc'd: 25.04.2025 9:01:01 |
| 12 | 2.2 | Ревизия главной страницы сайта |  | 3.17d | 2025-04-02 | 2025-04-07 | 11 |  | -0.33d | 0d | Дизайнер 1; Дизайнер 2 | 50.67h | 6,080 | Duration Calc'd: 25.04.2025 9:01:01 |
| 13 | 2.3 | Разработка и ревизия дизайна второстепенных страниц |  | 4.33d | 2025-04-07 | 2025-04-11 | 12 |  | -0.33d | 0d | Дизайнер 1; Дизайнер 2 | 69.33h | 8,320 | Duration Calc'd: 25.04.2025 9:01:01 |
| 14 | 2.4 | Разработка коллажей для ра зделов сайта |  | 7.33d | 2025-04-11 | 2025-04-23 | 13 |  | -0.33d | 0d | Дизайнер 1; Дизайнер 2 | 117.33h | 14,080 | Duration Calc'd: 25.04.2025 9:01:01 |
| 15 | 2.5 | Завершение разработки дизайна | milestone | 0d | 2025-04-23 | 2025-04-23 | 14 |  | -0.33d | 0d | Дизайнер 1; Дизайнер 2 |  |  | Duration Calc'd: 25.04.2025 9:01:01 |
| 16 | 3 | **Программирование и верстка** |  | 46d | 2025-04-23 | 2025-06-26 |  |  |  |  |  | 999h | 138,983.33 | Duration Calc'd: 25.04.2025 9:01:01 |
| 17 | 3.1 | Верстка шаблонов страниц |  | 29.33d | 2025-04-23 | 2025-06-03 | 15 |  | -0.33d | 0d | Верстальщик | 234.67h | 26,986.67 | Duration Calc'd: 25.04.2025 9:01:01 |
| 18 | 3.2 | Программирование |  | 17.67d | 2025-04-23 | 2025-05-16 | 17SS |  | 21.5d | 0d | Программист 3; Программист 1; Программист 2 | 230.67h | 33,800 | Duration Calc'd: 25.04.2025 9:01:01 |
| 19 | 3.3 | Заполнение страниц и тестирование на реальных данных |  | 16.67d | 2025-06-03 | 2025-06-26 | 17 |  | -0.33d | 0d | Программист 3; Программист 1; Программист 2 | 377.67h | 55,316.67 | Duration Calc'd: 25.04.2025 9:01:01 |
| 20 | 3.4 | Доработка кода, исправление ошибок |  | 6.5d | 2025-05-16 | 2025-05-27 | 18 |  | 21.5d |  | Программист 3; Программист 1; Программист 2 | 156h | 22,880 | Duration Calc'd: 25.04.2025 9:01:01 |
| 21 | 3.5 | Завершение программирования и верстки | milestone | 0d | 2025-06-26 | 2025-06-26 | 20, 19 |  | -0.33d | 0d | Программист 3; Программист 1; Программист 2 |  |  | Duration Calc'd: 25.04.2025 9:01:01 |
| 22 | 4 | Запуск и сопровождение |  | 1d? | 2025-06-26 | 2025-06-27 | 21 |  | -0.33d | 0d |  |  |  | Duration Calc'd: 25.04.2025 9:01:01 |
| 23 | 5 | **Создание пакета передачи** |  | 3d | 2025-06-27 | 2025-07-02 |  |  |  |  |  | 80h | 8,886.67 | Duration Calc'd: 25.04.2025 9:01:01 |
| 24 | 5.1 | Подготовка платформы |  | 1d | 2025-06-27 | 2025-06-30 | 22 |  | -0.33d | 0d | Программист 1; Программист 3 | 16h | 2,400 | Duration Calc'd: 25.04.2025 9:01:01 |
| 25 | 5.2 | Заливка контента |  | 1.17d | 2025-06-30 | 2025-07-01 | 24 |  | 0.67d |  | Системный администратор | 9.33h | 1,586.67 | Duration Calc'd: 25.04.2025 9:01:01 |
| 26 | 5.3 | Проверка качества |  | 1.17d | 2025-06-27 | 2025-06-30 | 24SS |  | -0.33d | 0d | Программист 2; Системный администратор | 18.67h | 2,893.33 | Duration Calc'd: 25.04.2025 9:01:01 |
| 27 | 5.4 | Сдача сайта заказчику |  | 1.17d | 2025-06-30 | 2025-07-01 | 26 |  | -0.33d | 0d | Верстальщик; Менеджер; Руководитель | 28h | 2,006.67 | Duration Calc'd: 25.04.2025 9:01:01 |
| 28 | 5.5 | Подготовка группы сопровождения |  | 1d | 2025-07-01 | 2025-07-02 | 27 |  | -0.33d | 0d | Руководитель | 8h |  | Duration Calc'd: 25.04.2025 9:01:01 |
| 29 | 6 | Закрытие проекта |  | 1d | 2025-07-02 | 2025-07-03 | 28 |  | 0d |  | Руководитель | 8h |  | Duration Calc'd: 25.04.2025 9:01:01 |
